# Предварительный план2007

Schedule from MS Project, 2013-04-22 to 2014-05-06, A marks actual dates.

## Calendars

- Стандартный: Mon-Fri 09:00-13:00, 14:00-18:00; Sat-Sun off. Exceptions (off unless hours are given): 2013-05-01 to 2013-05-05 (Первое мая), 2013-05-09 to 2013-05-12 (Девятое мая).

## Resources

| Resource |
| --- |
| Шилин Роман |
| Аналитик |
| Андрей Пирожков |
| Тугушев Илья |
| Денис Митавский |
| Java разработчик1 |
| Java разработчик2 |
| Валерий Мацукевич |
| Java разработчик3 |
| Java разработчик4 |
| WEB-дизайнер |
| Java разработчик |
| Андрей Цветков |
| Java разработчик5 |
| Тест Аналитик |
| Java разработчик6 |
| Тестировщик |
| Технический писатель |
| Технолог - администратор |
| Технический писатель2 |
| Системный аналитик1 |
| Системный аналитик2 |
| Системный аналитик3 |
| Системный аналитик4 |
| Владимир Панов |
| Сергей Кашанский |
| Роман Митинков |
| Роман |
| Глеб |
| Евгения Капустина |
| Эдуард Михайлов |
| Тимофей Билый |

## Schedule

| ID | WBS | Task | Type | Duration | Start | Finish | Predecessors | Complete | Remaining | Total slack | Free slack | Constraint | Resources | Work | Actual work |
| --- | --- | --- | --- | --- | --- | --- | --- | --- | --- | --- | --- | --- | --- | --- | --- |
| 1 | 1 | **Разработка второй версии CM4/5** |  | 267d? | 2013-04-22 A | 2014-05-06 |  | 7% | 247.38d? | 0d |  |  |  | 26810.4h | 1463.54h |
| 2 | 1.1 | Принято решение о начале разработки | milestone | 0d | 2013-04-22 | 2013-04-22 |  |  |  | 0d |  | start no earlier than 2013-04-22 |  |  |  |
| 3 | 1.2 | Управление проектом |  | 267d | 2013-04-22 | 2014-05-06 | 2 |  |  | 0d |  |  | Шилин Роман | 2136h |  |
| 4 | 1.3 | **Управление требованиями** |  | 193d | 2013-05-27 A | 2014-02-19 | 2 | 6% | 181.71d | 54d |  |  | Аналитик | 3463.2h | 178.34h |
| 5 | 1.3.1 | Выделен аналитик на проект | milestone | 0d | 2013-05-27 A | 2013-05-27 A |  | 100% |  |  |  | start no earlier than 2013-05-27 |  |  |  |
| 6 | 1.3.2 | Формирование скоупа проекта _ верхний уровень |  | 15d | 2013-05-27 A | 2013-06-14 | 5 | 73% | 4d | 54d | 0d |  | Евгения Капустина | 120h | 88h |
| 7 | 1.3.3 | Скоуп на систему сформирован и утвержден | milestone | 0d | 2013-06-21 | 2013-06-21 | 6FS+5d |  |  | 54d | 0d |  |  |  |  |
| 8 | 1.3.4 | Сопровождение требований |  | 173d | 2013-06-24 | 2014-02-19 | 5, 7 |  |  | 54d |  |  | Эдуард Михайлов; Евгения Капустина [30%] | 1799.2h |  |
| 9 | 1.4 | **Создание модуля "Делопроизводство" (документоориентированная среда)** |  | 213d? | 2013-04-22 A | 2014-02-19 |  | 12% | 187.91d? | 54d |  |  |  | 14610.4h | 1285.2h |
| 10 | 1.4.1 | Первичные требования для создания модуля "Делопроизводство" подготовлены | milestone | 0d | 2013-04-22 | 2013-04-22 | 2 |  |  | 89.86d | 0d | finish no earlier than 2012-04-02 |  |  |  |
| 11 | 1.4.2 | **Апробация идей прототипа** |  | 24d | 2013-04-29 A | 2013-06-06 |  | 99% | 0d | 238d |  |  |  | 144h | 144h |
| 12 | 1.4.2.1 | Пирожков доступен | milestone | 0d | 2013-06-03 | 2013-06-03 |  |  |  | 242d |  | start no earlier than 2013-06-03 |  |  |  |
| 13 | 1.4.2.2 | Проведение предварительных испытаний системы |  | 9d | 2013-04-29 A | 2013-05-16 A | 10FS+5d | 100% |  |  |  |  | Андрей Цветков | 72h | 72h |
| 14 | 1.4.2.3 | Описание обработки ВХ. Док. На примере технологий прототипа |  | 9d | 2013-05-20 A | 2013-06-06 A |  | 100% |  |  |  | start no earlier than 2013-05-20 | Андрей Пирожков | 72h | 72h |
| 15 | 1.4.3 | **Настройка инфраструктуры** |  | 16d | 2013-05-20 A | 2013-06-10 | 23 | 58% | 6.67d | 70d | 0d |  |  | 96h | 56h |
| 16 | 1.4.3.1 | Настройка непрерывной интеграции |  | 4d | 2013-05-20 A | 2013-05-23 A |  | 100% |  |  |  |  | Тугушев Илья | 32h | 32h |
| 17 | 1.4.3.2 | Поддержка UNIT-тестирования и интеграционного тестирования на уроне среды непрерывной интеграции |  | 5d | 2013-06-04 | 2013-06-10 |  |  |  | 70d |  | start no earlier than 2013-06-04 | Тугушев Илья | 40h |  |
| 18 | 1.4.3.3 | Репакеджинг проекта |  | 3d | 2013-05-27 A | 2013-05-29 A |  | 100% |  |  |  | start no earlier than 2013-05-27 | Сергей Кашанский | 24h | 24h |
| 19 | 1.4.4 | **Проектирование и формирование ядра системы** |  | 131d? | 2013-04-22 A | 2013-10-28 | 10 | 17% | 108.78d? | 68d | 0d |  |  | 6278.4h | 845.2h |
| 20 | 1.4.4.1 | **Определение структуры модуля Делопроизводство** |  | 25d | 2013-04-22 A | 2013-05-31 A |  | 100% |  |  |  |  |  | 352h | 352h |
| 21 | 1.4.4.1.1 | Разбивка на слои |  | 5d | 2013-04-22 A | 2013-04-26 A |  | 100% |  |  |  |  | Денис Митавский [50%]; Андрей Пирожков [50%] | 40h | 40h |
| 22 | 1.4.4.1.2 | Конфигурации, загрузка и инициализация системы в базовой конфигурации |  | 5d | 2013-04-29 A | 2013-05-08 A | 21 | 100% |  |  |  |  | Валерий Мацукевич; Денис Митавский [50%] | 60h | 60h |
| 23 | 1.4.4.1.3 | Базовая конфигурация объектов системы |  | 5d | 2013-05-13 A | 2013-05-17 A | 21, 22 | 100% |  |  |  |  | Денис Митавский [50%]; Валерий Мацукевич | 60h | 60h |
| 24 | 1.4.4.1.4 | Юнит-тестирование - базис |  | 6d | 2013-05-17 A | 2013-05-24 A | 13 | 100% |  |  |  |  | Денис Митавский [50%]; Андрей Цветков | 72h | 72h |
| 25 | 1.4.4.1.5 | Базовая имплементация слоя DAO |  | 5d | 2013-05-20 A | 2013-05-24 A | 23 | 100% |  |  |  |  | Валерий Мацукевич | 40h | 40h |
| 26 | 1.4.4.1.6 | Обеспечение программных компонет верификации первой очереди |  | 5d | 2013-05-27 A | 2013-05-31 A | 25 | 100% |  |  |  |  | Валерий Мацукевич; Андрей Цветков | 80h | 80h |

Notes:
- 26: UNIT тестирование в рамках наработанного кода

| ID | WBS | Task | Type | Duration | Start | Finish | Predecessors | Complete | Remaining | Total slack | Free slack | Constraint | Resources | Work | Actual work |
| --- | --- | --- | --- | --- | --- | --- | --- | --- | --- | --- | --- | --- | --- | --- | --- |
| 27 | 1.4.4.2 | **DAO** |  | 35d? | 2013-06-03 A | 2013-07-19 | 25, 26 | 67% | 11.52d? | 139d |  |  |  | 224h | 147.2h |
| 28 | 1.4.4.2.1 | DAO для бизнес-объектов |  | 7d | 2013-06-03 A | 2013-06-11 A |  | 100% |  |  |  |  | Валерий Мацукевич | 56h | 56h |
| 29 | 1.4.4.2.2 | DAO для коллекций |  | 13d | 2013-06-12 A | 2013-07-04 | 28 | 69% | 4d | 114d | 0d |  | Андрей Цветков | 104h | 72h |
| 30 | 1.4.4.2.3 | Функционал системы готов для проведения проектирования интеграции с GUI СМ4 | milestone | 0d | 2013-06-24 A | 2013-06-24 A | 28, 29 | 100% |  |  |  |  |  |  |  |
| 31 | 1.4.4.2.4 | DAO - утилитарные поля |  | 6d | 2013-06-25 A | 2013-07-08 | 29 | 80% | 1.2d | 148.8d |  |  | Денис Митавский [50%] | 24h | 19.2h |
| 32 | 1.4.4.2.5 | DAO - кэш уровня транзакции |  | 5d? | 2013-07-15 | 2013-07-19 | 92 |  |  | 134d | 0d |  | Валерий Мацукевич | 40h |  |
| 33 | 1.4.4.3 | CRUD-сервис для бизнес-объектов |  | 10d | 2013-06-11 A | 2013-06-24 A | 29FF | 100% |  |  |  |  | Андрей Цветков | 80h | 80h |
| 34 | 1.4.4.4 | Поддержка отсортированных дочерних бизнес-объектов |  | 5d | 2013-07-22 | 2013-07-26 | 32 |  |  | 134d |  |  | Валерий Мацукевич | 40h |  |
| 35 | 1.4.4.5 | Настройка Datasources/Jaas сервера приложений средствами Maven |  | 2d | 2013-07-05 | 2013-07-08 | 29 |  |  | 148d |  |  | Андрей Цветков | 16h |  |
| 36 | 1.4.4.6 | Рефакторинг |  | 4d | 2013-07-03 A | 2013-07-08 A | 25 | 100% |  |  |  | start no earlier than 2013-07-03 | Валерий Мацукевич | 32h | 32h |
| 37 | 1.4.4.7 | **Встроенный GUI** |  | 35d | 2013-06-10 A | 2013-07-26 |  | 24% | 26.71d | 134d |  |  |  | 132h | 18h |
| 38 | 1.4.4.7.1 | Базис GUI |  | 5d | 2013-06-10 A | 2013-06-14 |  | 90% | 0.5d | 164d |  | start no earlier than 2013-06-10 | Денис Митавский [50%] | 20h | 18h |
| 39 | 1.4.4.7.2 | Стилистическая адаптация компонентов GUI |  | 14d | 2013-07-09 | 2013-07-26 |  |  |  | 36d | 0d | start no earlier than 2013-07-09 | Тимофей Билый | 112h |  |
| 40 | 1.4.4.8 | **Права доступа** |  | 27d | 2013-06-12 A | 2013-07-18 |  | 32% | 18.32d | 115d | 47d |  |  | 184h | 36h |
| 41 | 1.4.4.8.1 | Права - оптимизация хранения (проектирование) |  | 10d | 2013-06-12 A | 2013-06-25 | 28 | 90% | 1d | 121d | 3d |  | Андрей Пирожков [50%] | 40h | 36h |
| 42 | 1.4.4.8.2 | Описание существующими декларативными средствами конфигурации |  | 8d | 2013-07-01 | 2013-07-10 | 41, 29FF |  |  | 121d |  |  | Андрей Цветков | 64h |  |
| 43 | 1.4.4.8.3 | Автофильтрация |  | 10d | 2013-07-05 | 2013-07-18 | 41, 29 |  |  | 114d | 0d |  | Андрей Цветков | 80h |  |
| 44 | 1.4.4.9 | **Workflow - интеграция с Activiti** |  | 56d | 2013-06-07 A | 2013-08-23 | 14 | 10% | 50.4d | 36d | 0d |  |  | 280h | 12h |
| 45 | 1.4.4.9.1 | Проектирование |  | 10d | 2013-06-07 A | 2013-06-20 |  | 30% | 7d | 62d | 0d |  | Андрей Пирожков [50%] | 40h | 12h |
| 46 | 1.4.4.9.2 | Разработка |  | 20d | 2013-07-29 | 2013-08-23 | 45, 39 |  |  | 36d |  |  | Андрей Пирожков [50%]; Сергей Кашанский | 240h |  |
| 47 | 1.4.4.10 | Наследование/Аспекты |  | 20d | 2013-06-21 | 2013-07-18 | 45 |  |  | 130d |  |  | Андрей Пирожков [50%] | 80h |  |
| 48 | 1.4.4.11 | **Коллекции** |  | 26d | 2013-07-19 A | 2013-08-23 |  | 66% | 8.94d | 79d | 21d |  |  | 300h | 168h |
| 49 | 1.4.4.11.1 | Коллекции - конфигурация |  | 3d | 2013-07-19 A | 2013-07-23 A | 46 | 100% |  |  |  |  | Денис Митавский | 24h | 24h |
| 50 | 1.4.4.11.2 | DAO - язык запросов коллекций |  | 12d | 2013-07-24 A | 2013-08-08 A | 49 | 100% |  |  |  |  | Сергей Кашанский; Денис Митавский [50%] | 96h | 96h |
| 51 | 1.4.4.11.3 | Сервис получения и получения счетчиков |  | 6d | 2013-08-09 A | 2013-08-16 A | 49, 50 | 100% |  |  |  |  | Андрей Пирожков [50%]; Сергей Кашанский | 48h | 48h |
| 52 | 1.4.4.11.4 | ПКД |  | 11d | 2013-08-09 | 2013-08-23 | 50 |  |  | 79d | 0d |  | Андрей Пирожков [50%]; Сергей Кашанский | 132h |  |

Notes:
- 33: - проектирование базового API / - имплементация
- 34: Для отображени и поддержания заданного порядка следования объектов
- 38: (логин, основной экран)
- 39: Верстка
- 41: Права доступа - оптимизация подхода, / подбор других названий сущностей (таблицы) переименовать таблицы и улучшить производительность
- 42: Права доступа - описание существующими декларативными средствами конфигурации / (для автоматического создания таблиц) + / конфигурирование под-запроса для фильтрации - там же
- 43: Права доступа - авто-фильтрация / + "внедрение в под-запросы"
- 44: Задачи: / - модель процесса (BPMN) / - Имплементация WF - сервиса , взаимодействие системы с Аctiviti
- 47: Архитектура - форма хранения данных (с учетом производительности) / -требуется вернуться к обсуждению
- 50: DAO - язык запросов коллекций
- 51: Коллекции - сервис получения и получения счетчиков
- 52: Для поддержания реализации избранного, отметок о прочтении и т.д.

| ID | WBS | Task | Type | Duration | Start | Finish | Predecessors | Total slack | Free slack | Constraint | Resources | Work |
| --- | --- | --- | --- | --- | --- | --- | --- | --- | --- | --- | --- | --- |
| 53 | 1.4.4.12 | **Действия** |  | 18d | 2013-07-24 | 2013-08-16 |  | 70d |  |  |  | 184h |
| 54 | 1.4.4.12.1 | Концепция |  | 4d | 2013-07-24 | 2013-07-29 | 49 | 70d | 0d |  | Андрей Пирожков [50%] | 16h |
| 55 | 1.4.4.12.2 | Реализация |  | 14d | 2013-07-30 | 2013-08-16 | 54 | 70d | 0d |  | Роман Митинков; Андрей Пирожков [50%] | 168h |
| 56 | 1.4.4.13 | **Формы встроенного GUI** |  | 26d | 2013-07-19 | 2013-08-23 |  | 114d |  |  |  | 264h |
| 57 | 1.4.4.13.1 | Конфигурация |  | 6d | 2013-07-19 | 2013-07-26 | 43 | 114d | 0d |  | Денис Митавский [50%] | 24h |
| 58 | 1.4.4.13.2 | API, сервис получения |  | 6d | 2013-07-29 | 2013-08-05 | 57 | 114d | 0d |  | Денис Митавский [50%]; Валерий Мацукевич | 72h |
| 59 | 1.4.4.13.3 | DAO форм |  | 14d | 2013-08-06 | 2013-08-23 | 58 | 114d |  |  | Денис Митавский [50%]; Валерий Мацукевич | 168h |
| 60 | 1.4.4.14 | **Слой сопряжения GUI CM4** |  | 74d | 2013-05-27 | 2013-09-05 |  | 63d |  |  |  | 1021.6h |
| 61 | 1.4.4.14.1 | REST-протокол для АРМа - проектирование |  | 3d | 2013-06-25 | 2013-06-27 | 30 | 42d | 0d |  | Тугушев Илья; Денис Митавский [20%]; Андрей Пирожков [20%] | 33.6h |
| 62 | 1.4.4.14.2 | REST-протокол для АРМа - реализация |  | 50d | 2013-06-28 | 2013-09-05 | 61 | 42d | 0d |  | Тугушев Илья [33%]; Роман; Глеб | 932h |
| 63 | 1.4.4.14.3 | Сервис работы с вложениями |  | 7d | 2013-05-27 | 2013-06-04 | 25 | 172d |  |  | Java разработчик1 | 56h |
| 64 | 1.4.4.15 | **Поиск** |  | 26d | 2013-07-29 | 2013-09-03 | 33 | 68d |  |  |  | 436h |
| 65 | 1.4.4.15.1 | Идея поиска овормлена | milestone | 0d | 2013-07-29 | 2013-07-29 |  | 68d | 0d | finish no earlier than 2013-07-29 |  |  |
| 66 | 1.4.4.15.2 | Поиск |  | 15d | 2013-07-30 | 2013-08-19 | 65 | 74d | 5d |  | Денис Митавский [50%]; Андрей Цветков | 180h |
| 67 | 1.4.4.15.3 | Полнотекстовый поиск |  | 20d | 2013-07-30 | 2013-08-26 | 65 | 68d | 0d |  | Java разработчик | 160h |
| 68 | 1.4.4.15.4 | Расширенный поиск |  | 6d | 2013-08-27 | 2013-09-03 | 66, 67 | 69d | 0d |  | Денис Митавский; Андрей Цветков | 96h |
| 69 | 1.4.4.16 | **Работа с отчетами** |  | 23d | 2013-08-26 | 2013-09-25 |  | 81d |  |  |  | 276h |
| 70 | 1.4.4.16.1 | JDBC-драйвер для системы построения отчётов |  | 8d | 2013-08-26 | 2013-09-04 | 52 | 81d | 0d |  | Денис Митавский [50%]; Андрей Цветков | 96h |
| 71 | 1.4.4.16.2 | Интеграция с Jasper Reports |  | 15d | 2013-09-05 | 2013-09-25 | 70 | 81d | 0d |  | Денис Митавский [50%]; Андрей Цветков | 180h |
| 72 | 1.4.4.17 | **Компоненты GUI** |  | 42d | 2013-08-27 | 2013-10-23 |  | 68d | 0d |  |  | 912.8h |
| 73 | 1.4.4.17.1 | GUI - архитектура активностей/дочерних активностей |  | 10d | 2013-08-27 | 2013-09-09 | 50, 67 | 68d | 0d |  | Денис Митавский [50%] | 40h |
| 74 | 1.4.4.17.2 | GUI - панель навигации |  | 10d | 2013-09-10 | 2013-09-23 | 52, 73 | 68d | 0d |  | Денис Митавский [50%]; Java разработчик | 120h |
| 75 | 1.4.4.17.3 | GUI - отображение коллекций активность |  | 10d | 2013-09-10 | 2013-09-23 | 73 | 91d |  |  | Тугушев Илья [33%]; Роман | 106.4h |
| 76 | 1.4.4.17.4 | GUI - отображение отчётов |  | 8d | 2013-09-26 | 2013-10-07 | 73, 71 | 81d |  |  | Андрей Цветков | 64h |
| 77 | 1.4.4.17.5 | GUI - действия |  | 10d | 2013-09-10 | 2013-09-23 | 73 | 91d |  |  | Тугушев Илья [33%]; Глеб | 106.4h |
| 78 | 1.4.4.17.6 | GUI - конфигурируемые формы проектирование |  | 3d | 2013-09-04 | 2013-09-06 | 68 | 69d | 0d |  | Денис Митавский [50%] | 12h |
| 79 | 1.4.4.17.7 | GUI - конфигурируемые формы реализация |  | 8d | 2013-09-09 | 2013-09-18 | 78 | 69d | 0d |  | Валерий Мацукевич | 64h |
| 80 | 1.4.4.17.8 | GUI - виджеты разработка (базовый набор) |  | 25d | 2013-09-19 | 2013-10-23 | 79 | 69d |  |  | Роман; Глеб | 400h |
| 81 | 1.4.4.18 | Тестирование производительности |  | 25d | 2013-09-24 | 2013-10-28 | 40, 33, 48, 74, 79 | 68d |  |  | Денис Митавский; Валерий Мацукевич | 400h |
| 82 | 1.4.4.19 | Версионность/аудит |  | 8d | 2013-08-19 | 2013-08-28 | 33, 55 | 70d | 0d |  | Сергей Кашанский | 64h |
| 83 | 1.4.4.20 | Блокировки бизнес-объектов |  | 6d | 2013-08-29 | 2013-09-05 | 82 | 70d | 0d |  | Сергей Кашанский | 48h |
| 84 | 1.4.4.21 | Описание структуры модуля Делопроизводство |  | 20d | 2013-06-11 | 2013-07-08 | 20, 15, 14 | 70d | 34d |  | Владимир Панов | 160h |
| 85 | 1.4.4.22 | Уточнение состава и сроков работ |  | 2d | 2013-10-24 | 2013-10-25 | 72 | 69d |  |  | Андрей Пирожков; Денис Митавский; Тугушев Илья | 48h |
| 86 | 1.4.4.23 | Кросс-СУБД, поддержка Oracle |  | 15d | 2013-09-06 | 2013-09-26 | 83 | 70d | 0d |  | Роман Митинков | 120h |
| 87 | 1.4.4.24 | SQL-trace |  | 5d | 2013-09-27 | 2013-10-03 | 86 | 70d | 0d |  | Java разработчик | 40h |
| 88 | 1.4.4.25 | Локализация (на уровне конфигурации) |  | 15d | 2013-10-04 | 2013-10-24 | 87 | 70d |  |  | Java разработчик | 120h |

Notes:
- 59: получение форм
- 62: Начальная реализация модуля "документооборот"
- 67: Включая взаимодействие с Solr
- 68: C учетом релевантности и оптимизации по объедененеию поисков аттрибутивного и полнотекстового
- 70: Используя язык запросов коллеций
- 74: Отображение и конфигурация + API для получения
- 75: отображающая коллекцию должна иметь возможность быть сконфигурированной так, чтобы мэппить значения некоторых колонок в картинки
- 81: - полноценное, продуманное, конфигурируемое, полностью автоматизированное (вплоть до промежуточного сбора статистики в СУБД перед запуском тестов производительности) с автоматической генерацией таблиц и графиков, с поддержкой нагружающих потоков и т.п.
- 82: История модификации объекта / Версионность - на бизнес слой
- 86: Кросс-СУБД, поддержка Oracle
- 88: Поддержка ресурсных файлов - в расках конфигурирования ресурсных файлов / Подмена языка в интерфейсе (передача локали пользоввателю) -

| ID | WBS | Task | Duration | Start | Finish | Predecessors | Complete | Remaining | Total slack | Free slack | Resources | Work | Actual work |
| --- | --- | --- | --- | --- | --- | --- | --- | --- | --- | --- | --- | --- | --- |
| 89 | 1.4.4.26 | **Интеграция с системой управления учетными записями** | 14d | 2013-09-06 | 2013-09-25 | 83 |  |  | 91d |  |  | 56h |  |
| 90 | 1.4.4.26.1 | Интеграция с ActiveDirectory | 14d | 2013-09-06 | 2013-09-25 |  |  |  | 91d |  | Андрей Пирожков [50%] | 56h |  |
| 91 | 1.4.4.27 | **Расширение функций сервиса конфигурации** | 20d | 2013-07-09 | 2013-08-05 |  |  |  | 113d |  |  | 288h |  |
| 92 | 1.4.4.27.1 | Расширяемость конфигурации | 4d | 2013-07-09 | 2013-07-12 | 36 |  |  | 113d | 0d | Валерий Мацукевич | 32h |  |
| 93 | 1.4.4.27.2 | Изменение и дополнение конфигурации системы | 16d | 2013-07-15 | 2013-08-05 | 92 |  |  | 113d |  | Андрей Пирожков; Роман Митинков | 256h |  |
| 94 | 1.4.4.28 | **Сервис для работы с системным журналом** | 15d | 2013-08-06 | 2013-08-26 | 93 |  |  | 113d |  |  | 120h |  |
| 95 | 1.4.4.28.1 | Ведение журнала действий пользователей и действий с объектами системы | 10d | 2013-08-06 | 2013-08-19 |  |  |  | 113d | 0d | Java разработчик2 | 80h |  |
| 96 | 1.4.4.28.2 | Настройка уровня логирования | 5d | 2013-08-20 | 2013-08-26 | 95 |  |  | 113d |  | Java разработчик2 | 40h |  |
| 97 | 1.4.5 | **Разработка** | 139d | 2013-06-11 A | 2013-12-20 | 15 | 5% | 132.44d | 97d |  |  | 4908h | 240h |
| 98 | 1.4.5.1 | Контроль и корректировка технических решений "Архитектурный комитет" | 139d | 2013-06-11 A | 2013-12-20 |  | 14% | 119d | 97d |  | Тугушев Илья [20%]; Андрей Пирожков [20%]; Денис Митавский [20%]; WEB-дизайнер [20%]; Аналитик [20%]; Владимир Панов [50%] | 1668h | 240h |
| 99 | 1.4.5.2 | **Разработка серверной логики модуля Делопроизводство** | 40d | 2013-08-26 | 2013-10-18 | 15, 44, 84 |  |  | 36d |  |  | 1280h |  |
| 100 | 1.4.5.2.1 | Разработка схем документов модуля Делопроизводство | 20d | 2013-08-26 | 2013-09-20 |  |  |  | 36d | 0d | Андрей Пирожков [50%]; Java разработчик | 240h |  |
| 101 | 1.4.5.2.2 | Разработка ЖЦ процессов модуля (WF) | 20d | 2013-09-23 | 2013-10-18 | 100 |  |  | 54d | 0d | Java разработчик; Андрей Пирожков [50%] | 240h |  |
| 102 | 1.4.5.2.3 | Разработка логики бизнес- действий модуля "Делопроизводство" | 40d | 2013-08-26 | 2013-10-18 |  |  |  | 54d | 0d | Java разработчик1; Андрей Пирожков [50%] | 480h |  |
| 103 | 1.4.5.2.4 | Разработка процессов автоматизации для модуля "Делопроизводство" | 20d | 2013-08-26 | 2013-09-20 |  |  |  | 162d |  | Java разработчик2 | 160h |  |
| 104 | 1.4.5.2.5 | Разработка модели прав доступа (контекстные роли) | 20d | 2013-09-23 | 2013-10-18 | 100 |  |  | 142d |  | Java разработчик2 | 160h |  |
| 105 | 1.4.5.3 | **Разработка клиентской логики модуля "Делопроизводство"** | 16d | 2013-09-06 | 2013-09-27 | 62 |  |  | 36d | 0d |  | 160h |  |
| 106 | 1.4.5.3.1 | Разработка форм для работы с документами в GUI (настройки форм) | 5d | 2013-09-06 | 2013-09-12 |  |  |  | 42d | 6d | Java разработчик3 | 40h |  |
| 107 | 1.4.5.3.2 | Разработка структуры рабочего места | 5d | 2013-09-23 | 2013-09-27 | 100, 106 |  |  | 36d |  | Java разработчик3 | 40h |  |
| 108 | 1.4.5.3.3 | Разработка специфичных для модуля форм элементов GUI | 10d | 2013-09-06 | 2013-09-19 |  |  |  | 42d |  | Java разработчик4 | 80h |  |
| 109 | 1.4.5.4 | **Подготовка работы со списками значений** | 40d | 2013-09-30 | 2013-11-22 |  |  |  | 117d |  |  | 640h |  |
| 110 | 1.4.5.4.1 | Разработка функционала учета организационно штатной структуры | 40d | 2013-09-30 | 2013-11-22 | 105 |  |  | 117d |  | Андрей Цветков | 320h |  |
| 111 | 1.4.5.4.2 | Разработка функционала с рубрикаторами (сложные справочники) | 20d | 2013-09-30 | 2013-10-25 | 105 |  |  | 117d | 0d | Валерий Мацукевич | 160h |  |
| 112 | 1.4.5.4.3 | Разработка функционала для работы с словарями данных (простые, линейные справочники) | 20d | 2013-10-28 | 2013-11-22 | 111 |  |  | 117d |  | Валерий Мацукевич | 160h |  |
| 113 | 1.4.5.5 | Подготовка отчетов | 40d | 2013-10-21 | 2013-12-13 | 100, 102, 101 |  |  | 54d | 0d | Java разработчик; Java разработчик1; Java разработчик2 | 960h |  |
| 114 | 1.4.5.6 | Сопряжение с мобильным клиентом СМ4 | 25d | 2013-09-30 | 2013-11-01 | 105 |  |  | 132d |  | Java разработчик3 | 200h |  |

Notes:
- 94: Сервис для работы с системным журналомВедение журнала действий пользователей и действий с объектами системы
- 95: Ведение журнала действий пользователей и действий с объектами системы

| ID | WBS | Task | Type | Duration | Start | Finish | Predecessors | Total slack | Free slack | Constraint | Resources | Work |
| --- | --- | --- | --- | --- | --- | --- | --- | --- | --- | --- | --- | --- |
| 115 | 1.4.6 | **Тестирование** |  | 82d? | 2013-10-29 | 2014-02-19 | 19 | 54d | 0d |  |  | 2544h |
| 116 | 1.4.6.1 | **Функциональное тестирование** |  | 67d? | 2013-10-29 | 2014-01-29 |  | 68d |  |  |  | 2224h |
| 117 | 1.4.6.1.1 | Подготовка ПМИ |  | 5d | 2013-10-29 | 2013-11-04 |  | 68d | 0d |  | Тест Аналитик | 40h |
| 118 | 1.4.6.1.2 | Разработка "сценариев тестирования" |  | 15d | 2013-10-29 | 2013-11-18 |  | 73d | 14d |  | Тест Аналитик | 120h |
| 119 | 1.4.6.1.3 | Разработка модели нагрузки для тестирования |  | 10d | 2013-11-05 | 2013-11-18 | 117 | 73d | 14d |  | Тест Аналитик | 80h |
| 120 | 1.4.6.1.4 | Адаптация автоматизированных сценариев от СМ4 для создания нагрузки |  | 25d | 2013-11-05 | 2013-12-09 | 117 | 68d | 14d |  | Java разработчик | 200h |
| 121 | 1.4.6.1.5 | **Проведение тестирования** |  | 38d? | 2013-12-09 | 2014-01-29 | 118, 119 | 59d | 0d |  |  | 1784h |
| 122 | 1.4.6.1.5.1 | **Подготовка среды тестирования** |  | 15d? | 2013-12-09 | 2013-12-27 |  | 59d |  |  |  | 200h |
| 123 | 1.4.6.1.5.1.1 | Разворачивание системы |  | 5d? | 2013-12-09 | 2013-12-16 | 125SF | 102d | 0d |  | Java разработчик | 40h |
| 124 | 1.4.6.1.5.1.2 | Система готова для подключения инструментов мониторинга | milestone | 0d | 2013-12-16 | 2013-12-16 | 123 | 102d |  |  |  |  |
| 125 | 1.4.6.1.5.1.3 | Наполнение данными |  | 10d? | 2013-12-16 | 2013-12-27 | 113 | 54d | 0d |  | Java разработчик; Java разработчик6 | 160h |
| 126 | 1.4.6.1.5.2 | Среда тестирования готова | milestone | 0d | 2013-12-27 | 2013-12-27 | 125, 120 | 54d | 0d | start no earlier than 2012-05-24 |  |  |
| 127 | 1.4.6.1.5.3 | Проведение тестирования |  | 10d | 2013-12-30 | 2014-01-10 | 126 | 54d | 0d |  | Тест Аналитик; Тестировщик [200%] | 240h |
| 128 | 1.4.6.1.5.4 | **Обработка результатов тестирования и внесение изменений в модуль** |  | 15d | 2014-01-09 | 2014-01-29 | 127FS-2d | 54d |  |  |  | 1344h |
| 129 | 1.4.6.1.5.4.1 | Устранение замечаний по результатам функционального тестирования |  | 15d | 2014-01-09 | 2014-01-29 |  | 54d | 0d |  | Java разработчик5; Java разработчик [300%]; Валерий Мацукевич; Java разработчик3; Java разработчик4; Java разработчик2; Java разработчик1; Андрей Цветков | 1200h |
| 130 | 1.4.6.1.5.4.2 | Проверка устранения замечаний |  | 6d | 2014-01-22 | 2014-01-29 | 129FS-6d | 54d | 0d |  | Тест Аналитик; Тестировщик [200%] | 144h |
| 131 | 1.4.6.2 | **Нагрузочное тестирование** |  | 28d | 2014-01-10 | 2014-02-19 | 117 | 54d |  |  |  | 320h |
| 132 | 1.4.6.2.1 | Стенд для нагрузочного тестирования подготовлен | milestone | 0d | 2014-01-10 | 2014-01-10 | 127 | 67d | 13d | finish no earlier than 2012-06-09 |  |  |
| 133 | 1.4.6.2.2 | Проведения нагрузочного тестирования |  | 10d | 2014-01-30 | 2014-02-12 | 130, 120, 132 | 54d | 0d |  | Java разработчик; Тест Аналитик; Тестировщик | 240h |
| 134 | 1.4.6.2.3 | Обработка результатов нагрузочного тестирования |  | 5d | 2014-02-13 | 2014-02-19 | 133 | 54d |  |  | Тест Аналитик; Тестировщик | 80h |
| 135 | 1.4.7 | Разработка модуля "Делопроизводство" завершена | milestone | 0d | 2014-02-19 | 2014-02-19 | 115 | 54d |  |  |  |  |
| 136 | 1.4.8 | **Подготовка документации** |  | 80d | 2013-10-29 | 2014-02-17 | 115SS | 56d |  |  |  | 640h |
| 137 | 1.4.8.1 | Разработка документа "Концепция системы " |  | 40d | 2013-10-29 | 2013-12-23 |  | 56d | 0d |  | Владимир Панов | 320h |
| 138 | 1.4.8.2 | Разработка "Software Architecture Document" |  | 40d | 2013-12-24 | 2014-02-17 | 137 | 56d | 0d |  | Владимир Панов | 320h |
| 139 | 1.4.8.3 | Документы подготовлены | milestone | 0d | 2014-02-17 | 2014-02-17 | 138 | 56d |  |  |  |  |

| ID | WBS | Task | Type | Duration | Start | Finish | Predecessors | Total slack | Free slack | Constraint | Resources | Work |
| --- | --- | --- | --- | --- | --- | --- | --- | --- | --- | --- | --- | --- |
| 140 | 1.5 | **Проверка работоспособности решения - Организация демонстрации** |  | 25d? | 2013-12-09 | 2014-01-10 | 121SS | 82d |  |  |  | 448h |
| 141 | 1.5.1 | Подготовка стенда |  | 3d | 2013-12-09 | 2013-12-11 | 142SF | 104d |  |  | Java разработчик; Аналитик | 48h |
| 142 | 1.5.2 | Подготовка прототипа |  | 20d? | 2013-12-09 | 2014-01-03 |  | 82d | 0d |  | Java разработчик; Аналитик | 320h |
| 143 | 1.5.3 | Проведение демонстраций |  | 3d | 2014-01-06 | 2014-01-08 | 142 | 82d | 0d |  | Java разработчик; Аналитик | 48h |
| 144 | 1.5.4 | Анализ результатов - выводы |  | 2d | 2014-01-09 | 2014-01-10 | 143 | 82d |  |  | Java разработчик; Аналитик | 32h |
| 145 | 1.6 | **Создание модулей первой очереди** |  | 111d? | 2013-10-11 | 2014-03-17 |  | 36d |  |  |  | 6152.8h |
| 146 | 1.6.1 | Определен состав модулей первой очереди и первичные требования подготовлены | milestone | 0d | 2013-10-11 | 2013-10-11 | 105FS+10d | 36d | 0d | finish no earlier than 2012-04-02 |  |  |
| 147 | 1.6.2 | **Проектирование** |  | 18.33d | 2013-10-14 | 2013-11-07 | 146 | 36d | 0d |  |  | 480h |
| 148 | 1.6.2.1 | Определение структуры модулей первой очереди |  | 13d | 2013-10-14 | 2013-10-30 |  | 36d | 0d |  | Андрей Пирожков; Тугушев Илья; Денис Митавский; WEB-дизайнер | 416h |
| 149 | 1.6.2.2 | Уточнение состава и сроков работ |  | 5.33d | 2013-10-31 | 2013-11-07 | 148 | 50.67d |  |  | Тугушев Илья [50%]; Андрей Пирожков [50%]; Денис Митавский [50%] | 64h |
| 150 | 1.6.3 | Принято решение о разработке модулей второй очереди | milestone | 0d | 2013-10-30 | 2013-10-30 | 148 | 36d | 0d | finish no earlier than 2012-05-21 |  |  |
| 151 | 1.6.4 | **Разработка** |  | 40d | 2013-10-31 | 2013-12-25 | 150 | 36d |  |  |  | 2864.8h |
| 152 | 1.6.4.1 | Контроль и корректировка технических решений "Архитектурный комитет" |  | 37d | 2013-10-31 | 2013-12-20 |  | 97d |  |  | Тугушев Илья [10%]; Андрей Пирожков [10%]; Денис Митавский [10%]; WEB-дизайнер | 384.8h |
| 153 | 1.6.4.2 | **Разработка серверной логики модулей первой очереди** |  | 40d | 2013-10-31 | 2013-12-25 |  | 36d | 0d |  |  | 1600h |
| 154 | 1.6.4.2.1 | Разработка схем документов для модулей первой очереди |  | 20d | 2013-10-31 | 2013-11-27 |  | 36d | 0d |  | Java разработчик2; Java разработчик | 320h |
| 155 | 1.6.4.2.2 | Разработка ЖЦ процессов (WF) |  | 20d | 2013-11-28 | 2013-12-25 | 154 | 36d |  |  | Java разработчик2; Java разработчик | 320h |
| 156 | 1.6.4.2.3 | Разработка логики бизнес- действий для модулей первой очереди |  | 40d | 2013-10-31 | 2013-12-25 |  | 36d |  |  | Java разработчик1; Java разработчик | 640h |
| 157 | 1.6.4.2.4 | Разработка процессов автоматизации для модулей первой очереди |  | 20d | 2013-10-31 | 2013-11-27 |  | 56d |  |  | Java разработчик | 160h |
| 158 | 1.6.4.2.5 | Разработка модели прав доступа (контекстные роли) |  | 20d | 2013-11-28 | 2013-12-25 | 154 | 36d |  |  | Java разработчик | 160h |
| 159 | 1.6.4.3 | **Разработка клиентской логики модулей первой очереди** |  | 30d | 2013-10-31 | 2013-12-11 |  | 46d | 10d |  |  | 320h |
| 160 | 1.6.4.3.1 | Разработка форм для работы с документами в GUI (настройки форм) |  | 10d | 2013-10-31 | 2013-11-13 |  | 66d |  |  | Java разработчик3 | 80h |
| 161 | 1.6.4.3.2 | Разработка структуры рабочего места |  | 10d | 2013-11-28 | 2013-12-11 | 154 | 46d |  |  | Java разработчик3 | 80h |
| 162 | 1.6.4.3.3 | Разработка специфичных для модуля форм элементов GUI |  | 20d | 2013-10-31 | 2013-11-27 |  | 56d |  |  | Java разработчик4 | 160h |
| 163 | 1.6.4.4 | **Разработка вспомогательного инструментария** |  | 20d | 2013-11-07 | 2013-12-05 |  | 50.67d | 14.67d |  |  | 400h |
| 164 | 1.6.4.4.1 | Построитель форм |  | 10d | 2013-11-07 | 2013-11-21 | 147 | 60.67d |  |  | Андрей Цветков | 80h |
| 165 | 1.6.4.4.2 | Разработка инсталлятора |  | 20d | 2013-11-07 | 2013-12-05 | 147 | 50.67d |  |  | Валерий Мацукевич | 160h |
| 166 | 1.6.4.4.3 | Разработка конфигуратора |  | 10d | 2013-11-07 | 2013-11-21 | 147 | 60.67d |  |  | Java разработчик5; Java разработчик | 160h |
| 167 | 1.6.4.5 | Подготовка отчетов |  | 20d | 2013-10-31 | 2013-11-27 |  | 114d |  |  | Java разработчик | 160h |
| 168 | 1.6.5 | Сборка модулей первой очереди завершена | milestone | 0d | 2013-12-25 | 2013-12-25 | 153, 159, 163 | 36d | 0d |  |  |  |

| ID | WBS | Task | Type | Duration | Start | Finish | Predecessors | Total slack | Free slack | Constraint | Resources | Work |
| --- | --- | --- | --- | --- | --- | --- | --- | --- | --- | --- | --- | --- |
| 169 | 1.6.6 | **Тестирование** |  | 58d? | 2013-12-26 | 2014-03-17 | 168 | 36d | 0d |  |  | 2648h |
| 170 | 1.6.6.1 | **Функциональное тестирование** |  | 38d? | 2013-12-26 | 2014-02-17 |  | 36d |  |  |  | 2024h |
| 171 | 1.6.6.1.1 | Подготовка ПМИ |  | 5d | 2013-12-26 | 2014-01-01 |  | 36d | 0d |  | Тест Аналитик | 40h |
| 172 | 1.6.6.1.2 | Разработка "сценариев тестирования" |  | 15d | 2013-12-26 | 2014-01-15 |  | 41d | 0d |  | Тест Аналитик | 120h |
| 173 | 1.6.6.1.3 | Разработка модели нагрузки для тестирования |  | 10d | 2014-01-02 | 2014-01-15 | 171 | 79d |  |  | Тест Аналитик | 80h |
| 174 | 1.6.6.1.4 | **Проведение тестирования** |  | 38d? | 2013-12-26 | 2014-02-17 |  | 41d |  |  |  | 1784h |
| 175 | 1.6.6.1.4.1 | **Подготовка среды тестирования** |  | 15d? | 2013-12-26 | 2014-01-15 |  | 41d |  |  |  | 200h |
| 176 | 1.6.6.1.4.1.1 | Разворачивание системы |  | 5d? | 2013-12-26 | 2014-01-01 |  | 41d | 0d |  | Java разработчик | 40h |
| 177 | 1.6.6.1.4.1.2 | Наполнение данными |  | 10d? | 2014-01-02 | 2014-01-15 | 176 | 41d | 0d |  | Java разработчик; Java разработчик6 | 160h |
| 178 | 1.6.6.1.4.2 | Среда тестирования готова | milestone | 0d | 2014-01-15 | 2014-01-15 | 172, 177 | 41d | 0d | finish no earlier than 2012-06-09 |  |  |
| 179 | 1.6.6.1.4.3 | Проведение тестирования |  | 10d | 2014-01-16 | 2014-01-29 | 178 | 41d | 0d |  | Тест Аналитик; Тестировщик [200%] | 240h |
| 180 | 1.6.6.1.4.4 | **Обработка результатов тестирования и внесение изменений в модуль** |  | 15d | 2014-01-28 | 2014-02-17 | 168, 179FS-2d | 41d |  |  |  | 1344h |
| 181 | 1.6.6.1.4.4.1 | Устранение замечаний по результатам функционального тестирования |  | 15d | 2014-01-28 | 2014-02-17 |  | 41d | 0d |  | Java разработчик5; Java разработчик [300%]; Валерий Мацукевич; Java разработчик3; Java разработчик4; Java разработчик2; Java разработчик1; Андрей Цветков | 1200h |
| 182 | 1.6.6.1.4.4.2 | Проверка устранения замечаний |  | 6d | 2014-02-10 | 2014-02-17 | 181FS-6d | 41d | 0d |  | Тест Аналитик; Тестировщик [200%] | 144h |
| 183 | 1.6.6.2 | **Нагрузочное тестирование** |  | 53d | 2014-01-02 | 2014-03-17 | 171 | 36d |  |  |  | 624h |
| 184 | 1.6.6.2.1 | Подготовка автоматизированных сценариев для создания нагрузки |  | 38d | 2014-01-02 | 2014-02-24 |  | 36d | 0d |  | Java разработчик | 304h |
| 185 | 1.6.6.2.2 | Стенд для нагрузочного тестирования подготовлен | milestone | 0d | 2014-01-29 | 2014-01-29 | 179 | 54d | 18d | finish no earlier than 2012-06-09 |  |  |
| 186 | 1.6.6.2.3 | Проведения нагрузочного тестирования |  | 10d | 2014-02-25 | 2014-03-10 | 182, 184, 185 | 36d | 0d |  | Java разработчик; Тест Аналитик; Тестировщик | 240h |
| 187 | 1.6.6.2.4 | Обработка результатов нагрузочного тестирования |  | 5d | 2014-03-11 | 2014-03-17 | 186 | 36d |  |  | Тест Аналитик; Тестировщик | 80h |
| 188 | 1.6.7 | Разработка модулей первой очереди завершена | milestone | 0d | 2014-03-17 | 2014-03-17 | 169 | 36d |  |  |  |  |
| 189 | 1.6.8 | **Подготовка документации** |  | 38d? | 2013-12-26 | 2014-02-17 | 169SS | 56d |  |  |  | 160h |
| 190 | 1.6.8.1 | Разработка "Software Architecture Document" для модулей первой очереди |  | 20d | 2013-12-26 | 2014-01-22 |  | 74d | 18d |  | Технический писатель | 160h |
| 191 | 1.6.8.2 | Документы подготовлены | milestone | 0d | 2014-02-17 | 2014-02-17 | 182, 190 | 56d |  |  |  |  |
